# SOW5

Schedule from MS Project, 2011-05-20 to 2011-07-27, status date 2011-05-20, A marks actual dates.
Grizli777

## Calendars

- Standard: Mon-Fri 08:00-12:00, 13:00-17:00; Sat-Sun off.

## Resources

| Resource |
| --- |
| VladL |
| ArturR |
| VladS |
| EliaK |
| MichaelL |
| VadimS |

## Schedule

| ID | WBS | Task | Type | Duration | Start | Finish | Predecessors | Complete | Remaining | Total slack | Free slack | Resources | Work |
| --- | --- | --- | --- | --- | --- | --- | --- | --- | --- | --- | --- | --- | --- |
| 1 | 1 | **VISTA** |  | 49d? | 2011-05-20 A | 2011-07-27 |  |  | 48.8d? | 0d |  |  | 1208h |
| 2 | 1.1 | **CRM** |  | 49d? | 2011-05-20 A | 2011-07-27 |  | 1% | 48.69d? | 0d |  |  | 808h |
| 3 | 1.1.1 | **Business Domain (Lister, Search Criteria, Viewer, Editor)** |  | 22d | 2011-05-20 | 2011-06-20 |  |  |  | -26d | 0d |  | 176h |
| 4 | 1.1.1.1 | Building |  | 2d | 2011-05-26 | 2011-05-27 |  |  |  | 43d |  | VladL | 16h |
| 5 | 1.1.1.2 | Roof | inactive | 2d? | 2011-05-20 | 2011-05-23 |  |  |  | 47d |  | VladL | 16h |
| 6 | 1.1.1.3 | RoofSegment | inactive | 2d? | 2011-05-20 | 2011-05-23 |  |  |  | 47d |  | VladL | 16h |
| 7 | 1.1.1.4 | Parking |  | 2d | 2011-05-30 | 2011-05-31 |  |  |  | 41d |  | VladL | 16h |
| 8 | 1.1.1.5 | Parking Spot |  | 2d | 2011-06-01 | 2011-06-02 |  |  |  | 39d |  | VladL | 16h |
| 9 | 1.1.1.6 | Locker Area |  | 2d | 2011-06-03 | 2011-06-06 |  |  |  | 37d |  | VladL | 16h |
| 10 | 1.1.1.7 | Locker |  | 2d | 2011-06-07 | 2011-06-08 |  |  |  | 35d |  | VladL | 16h |
| 11 | 1.1.1.8 | Pool | inactive | 2d? | 2011-05-20 | 2011-05-23 |  |  |  | 47d |  | VladL | 16h |
| 12 | 1.1.1.9 | Boiler | inactive | 2d? | 2011-05-20 | 2011-05-23 |  |  |  | 47d |  | VladL | 16h |
| 13 | 1.1.1.10 | Unit |  | 2d | 2011-06-17 | 2011-06-20 |  |  |  | 27d |  | VladL | 16h |
| 14 | 1.1.1.11 | Tenant |  | 2d | 2011-06-09 | 2011-06-10 |  |  |  | 33d |  | VladL | 16h |
| 15 | 1.1.1.12 | Inquiry |  | 2d | 2011-06-13 | 2011-06-14 |  |  |  | 31d |  | VladL | 16h |
| 16 | 1.1.1.13 | Lease |  | 2d | 2011-05-20 | 2011-05-23 |  |  |  | -26d | 0d | VladL | 16h |
| 17 | 1.1.1.14 | Application |  | 2d | 2011-05-24 | 2011-05-25 | 16 |  |  | -26d | 0d | VladL | 16h |
| 18 | 1.1.1.15 | Employee | inactive | 2d? | 2011-05-20 | 2011-05-23 |  |  |  | 47d |  | VladL | 16h |
| 19 | 1.1.1.16 | Vendor | inactive | 2d? | 2011-05-20 | 2011-05-23 |  |  |  | 47d |  | VladL | 16h |
| 20 | 1.1.1.17 | Contract | inactive | 2d? | 2011-05-20 | 2011-05-23 |  |  |  | 47d |  | VladL | 16h |
| 21 | 1.1.1.18 | Concession |  | 2d | 2011-06-15 | 2011-06-16 |  |  |  | 29d |  | VladL | 16h |
| 22 | 1.1.2 | **Administrative Domain** |  | 2d? | 2011-05-20 | 2011-05-23 |  |  |  | 0d |  |  |  |
| 23 | 1.1.2.1 | Role |  | 1d | 2011-05-20 | 2011-05-20 |  |  |  | 48d |  |  |  |
| 24 | 1.1.2.2 | User |  | 2d | 2011-05-20 | 2011-05-23 |  |  |  | 47d |  |  |  |
| 25 | 1.1.2.3 | Behaviour | manual | 1d? | 2011-05-20 | 2011-05-20 |  |  |  |  |  |  |  |

Notes:
- 5: This is not critical for Beta version
- 6: This is not critical for Beta version
- 11: Not in beta scope
- 12: Out for Scope for Betta
- 19: This is not critical for Beta version
- 21: - Concessions must be approved / - available time interval (i.e. concession available for new applications within next 2 weeks) / - description (1 month free, 10% off, free TV, etc) / - conbcession value (cost of TV, actual cost of 1 month rent) / - rules on how to incorporate concession to the lease (free 13th month, or apply equal discounts to every month, etc)
- 24: User of the system

| ID | WBS | Task | Type | Duration | Start | Finish | Total slack | Free slack | Resources | Work |
| --- | --- | --- | --- | --- | --- | --- | --- | --- | --- | --- |
| 26 | 1.1.3 | **Policies** |  | 2d | 2011-05-20 | 2011-05-23 |  |  |  | 392h |
| 27 | 1.1.3.1 | Project Plan for Policies |  | 1d | 2011-05-20 | 2011-05-20 | 1d |  | ArturR | 8h |
| 28 | 1.1.3.2 | Policy Framework Design |  | 14d | 2011-05-23 | 2011-06-09 | -13d | 0d | ArturR | 112h |
| 29 | 1.1.3.3 | Policy related framework - navigate, list, search, duplicate, edit | manual | 5d | 2011-05-20 | 2011-05-26 |  |  |  |  |
| 30 | 1.1.3.4 | **Lease Application** |  | 31d? | 2011-06-10 | 2011-07-22 | -30d | 0d |  | 248h |
| 31 | 1.1.3.4.1 | Identification documents |  | 1d? | 2011-07-08 | 2011-07-08 | -34d | 0d | ArturR | 8h |
| 32 | 1.1.3.4.2 | Proof documents | manual | 1d? | 2011-06-10 | 2011-06-10 |  |  |  |  |
| 33 | 1.1.3.4.3 | Document Req After Submit |  | 1d? | 2011-07-11 | 2011-07-11 | -35d | 0d | ArturR | 8h |
| 34 | 1.1.3.4.4 | Employment Req |  | 1d? | 2011-07-12 | 2011-07-12 | -36d | 0d | ArturR | 8h |
| 35 | 1.1.3.4.5 | Residency Req |  | 1d? | 2011-07-13 | 2011-07-13 | -37d | 0d | ArturR | 8h |
| 36 | 1.1.3.4.6 | Guarantor Req |  | 1d? | 2011-07-14 | 2011-07-14 | -38d | 0d | ArturR | 8h |
| 37 | 1.1.3.4.7 | Equifax Preapproval Requirements |  | 2d | 2011-06-14 | 2011-06-15 | -17d | 0d | ArturR | 16h |
| 38 | 1.1.3.4.8 | Deposit Calculation Formula |  | 2d | 2011-06-16 | 2011-06-17 | -19d | 0d | ArturR | 16h |
| 39 | 1.1.3.4.9 | Security Deposit Formula | manual | 1d? | 2011-06-10 | 2011-06-10 |  |  |  |  |
| 40 | 1.1.3.4.10 | Legal/Collections |  | 2d | 2011-06-20 | 2011-06-21 | -21d | 0d | ArturR | 16h |
| 41 | 1.1.3.4.11 | Kids |  | 2d | 2011-06-22 | 2011-06-23 | -23d | 0d | ArturR | 16h |
| 42 | 1.1.3.4.12 | Late Fees |  | 2d | 2011-06-24 | 2011-06-27 | -25d | 0d | ArturR | 16h |
| 43 | 1.1.3.4.13 | Usage Fees |  | 2d | 2011-06-28 | 2011-06-29 | -27d | 0d | ArturR | 16h |
| 44 | 1.1.3.4.14 | Prorate |  | 2d | 2011-06-30 | 2011-07-01 | -29d | 0d | ArturR | 16h |
| 45 | 1.1.3.4.15 | Pets Charge |  | 2d | 2011-06-10 | 2011-06-13 | -15d | 0d | ArturR | 16h |
| 46 | 1.1.3.4.16 | Pet Type and Number |  | 2d | 2011-07-04 | 2011-07-05 | -31d | 0d | ArturR | 16h |
| 47 | 1.1.3.4.17 | Docs To Be Given To Tenant |  | 2d | 2011-07-06 | 2011-07-07 | -33d | 0d | ArturR | 16h |
| 48 | 1.1.3.4.18 | Devices |  | 1d? | 2011-07-15 | 2011-07-15 | -39d | 0d | ArturR | 8h |
| 49 | 1.1.3.4.19 | Limit Number of Tenants |  | 1d? | 2011-07-18 | 2011-07-18 | -40d | 0d | ArturR | 8h |
| 50 | 1.1.3.4.20 | Accepted Payment Types |  | 1d? | 2011-07-19 | 2011-07-19 | -41d | 0d | ArturR | 8h |
| 51 | 1.1.3.4.21 | Application Fee |  | 1d? | 2011-07-20 | 2011-07-20 | -42d | 0d | ArturR | 8h |
| 52 | 1.1.3.4.22 | Lease Term Formula |  | 1d? | 2011-07-21 | 2011-07-21 | -43d | 0d | ArturR | 8h |
| 53 | 1.1.3.4.23 | Lease Termination Period |  | 1d? | 2011-07-22 | 2011-07-22 | -44d | 0d | ArturR | 8h |

Notes:
- 31: Policy lists acceptable government documents: passport, driver licence, immigration paper. User can specify what he wants by adding new id types as strings in the form. These types will appear as drop down menu in the wizzard.
- 32: Policy lists required or optional proof documents: proof of income (T4, employee letter), proof of residence (utility bill), proof of asset (bank statement, bank letter). User can specify what he wants by adding new id types as strings in the form. These types will appear as drop down menu in the wizzard.
- 33: Policy specifies conditions for which additional documents are required to be provided. For example, at the certain level of income or assets, we may need to ask PT to provide additional source of income or proof of additional asset.
- 34: Policy specifies length of time for the employment history. For example, if this policy specifies 3 years and person 1st employment data shows he worked for 2 years, either warning will pop up to prompt the person to enter previous employment info.
- 35: Policy specifies length of time for the resident history. For example, if this policy specifies 3 years and person 1st place of residence shows he lived there for 2 years, warning will pop up to prompt the person to enter previous residence.
- 36: Specifies qualitative and quantitative conditions for which guarantor is required.
- 37: Policy secifies algorithm to preapprove PT. Here user should be able to specify a set of parameter values in equifax report sufficient to approve
- 38: Specifies first, last, or first and last month rent as deposit
- 39: Specify formula to calculate security deposit. Could be ammount of dollars or % of rent
- 40: Specifies all rules and procedures related to tenant breaking the regulations and rules. Tenant needs to accept the receipt of the content of this policy.
- 41: Policy may limit building to adults only, for example a retirement building
- 42: Policy will define what is late and any fines associated with late payments
- 43: If any amenity/utility has usage fees/deposit this policy will identify that.
- 44: Prorate policy identifies formula to calculate prorate rent.
- 45: Pet charge policy identifies pet fee or pet deposit. May specify different charges depending on pet size/weight.
- 46: Specifies allowed pets as well as their maximum numbers, for example 2 pets per unit, allowed dog, cat, bird
- 47: Policy defines list of documents to be given to tenant upon lease signing/ move in. Tenant has to sign that he received every document in the package
- 48: Tenant may need to be given a number of devices: access keys/cards, equipment, etc. that have deposit associated with them.
- 49: Define maximum number of tenants for a unit type or per bedroom
- 50: PM may accept only certain payment types.
- 51: Define the application fee
- 52: Formula for calculating rent for other lease terms (ex. 6 months, 9 months, 18 months)
- 53: Define the minimum length of time that a notice can be given. Usually 60 days.

| ID | WBS | Task | Type | Duration | Start | Finish | Predecessors | Total slack | Free slack | Resources | Work |
| --- | --- | --- | --- | --- | --- | --- | --- | --- | --- | --- | --- |
| 54 | 1.1.3.5 | **Post-approval and Tenancy** |  | 49d? | 2011-05-20 | 2011-07-27 |  | -47d | 0d |  | 24h |
| 55 | 1.1.3.5.1 | Change Accepted Payment Types |  | 1d? | 2011-07-25 | 2011-07-25 |  | -45d | 0d | ArturR | 8h |
| 56 | 1.1.3.5.2 | Tenant insurance requirements |  | 1d? | 2011-07-26 | 2011-07-26 |  | -46d | 0d | ArturR | 8h |
| 57 | 1.1.3.5.3 | Hydro requirements |  | 1d? | 2011-07-27 | 2011-07-27 |  | -47d | 0d | ArturR | 8h |
| 58 | 1.1.3.5.4 | Pre-move In Inspection Requirement |  | 1d? | 2011-05-20 | 2011-05-20 |  | 1d |  |  |  |
| 59 | 1.1.4 | **Business Processes** |  | 2d | 2011-05-20 | 2011-05-23 |  |  |  |  | 240h |
| 60 | 1.1.4.1 | Application Approval |  | 4d | 2011-06-16 | 2011-06-28 | 17 | -26d | 0d | VladS; MichaelL | 32h |
| 61 | 1.1.4.2 | Move In |  | 4d | 2011-05-31 | 2011-06-10 |  | -14d | 0d | VladS; MichaelL | 32h |
| 62 | 1.1.4.3 | Notice |  | 4d | 2011-06-02 | 2011-06-14 |  | -16d | 0d | VladS; MichaelL | 32h |
| 63 | 1.1.4.4 | Move Out |  | 4d | 2011-06-06 | 2011-06-16 |  | -18d | 0d | VladS; MichaelL | 32h |
| 64 | 1.1.4.5 | Off Market Statuses |  | 4d | 2011-06-08 | 2011-06-20 |  | -20d | 0d | VladS; MichaelL | 32h |
| 65 | 1.1.4.6 | Parking/Storage Assignment |  | 4d | 2011-06-10 | 2011-06-22 |  | -22d | 0d | MichaelL; VladS | 32h |
| 66 | 1.1.4.7 | Resource Booking |  | 4d | 2011-06-14 | 2011-06-24 |  | -24d | 0d | MichaelL; VladS | 32h |
| 67 | 1.1.4.8 | Inquiry Management |  | 2d | 2011-05-20 | 2011-05-23 |  | 0d |  |  |  |
| 68 | 1.1.4.9 | Lease Application Management |  | 2d | 2011-05-20 | 2011-05-23 |  | 0d |  |  |  |
| 69 | 1.1.4.10 | Vacant Unit Scoping |  | 2d | 2011-05-20 | 2011-05-23 |  | 0d |  |  |  |
| 70 | 1.1.4.11 | Paymant Transaction Recording | manual | 1d? | 2011-05-20 | 2011-05-20 |  |  |  | MichaelL; VladS | 16h |
| 71 | 1.1.5 | **Profile** |  | 1d | 2011-05-20 | 2011-05-20 |  |  |  |  |  |
| 72 | 1.1.5.1 | Change Email, Password |  | 1d | 2011-05-20 | 2011-05-20 |  | 0d |  |  |  |
| 73 | 1.1.6 | **Preferences** |  | 1d | 2011-05-20 | 2011-05-20 |  |  |  |  |  |
| 74 | 1.1.6.1 | Notifications settings |  | 1d | 2011-05-20 | 2011-05-20 |  | 0d |  |  |  |
| 75 | 1.1.7 | **PM Settings** |  | 1d | 2011-05-20 | 2011-05-20 |  |  |  |  |  |
| 76 | 1.1.7.1 | Details |  | 1d | 2011-05-20 | 2011-05-20 |  | 0d |  |  |  |
| 77 | 1.1.7.2 | Policy Management |  | 1d | 2011-05-20 | 2011-05-20 |  | 0d |  |  |  |
| 78 | 1.1.7.3 | User Definition | manual | 1d? | 2011-05-20 | 2011-05-20 |  |  |  |  |  |
| 79 | 1.1.7.4 | Role Definition | manual | 1d? | 2011-05-20 | 2011-05-20 |  |  |  |  |  |

Notes:
- 55: some payment types maybe disallowed during tenancy (for example, upon EFT bounce, no more EFT for this tenant)
- 56: If mandatory, need the proof of tenant insurance before move-in
- 57: Need proof that tenant set up a hydro account before move in
- 58: Tenant maybe required to inspect the unit pre-move in and sign the inspection form.
- 60: http://propertyvista.jira.com/wiki/display/VISTA/PT+Approval+Process
- 66: Booking elevator, booking party room, booking pool (for example for birthday party), etc.

| ID | WBS | Task | Type | Duration | Start | Finish | Complete | Total slack |
| --- | --- | --- | --- | --- | --- | --- | --- | --- |
| 80 | 1.1.7.5 | **CMS for Portal** |  | 1d | 2011-05-20 | 2011-05-20 |  |  |
| 81 | 1.1.7.5.1 | General Tenant Portal Properties |  | 1d | 2011-05-20 | 2011-05-20 |  | 0d |
| 82 | 1.1.7.5.2 | Site Map Tree with Editing Capabilities |  | 1d | 2011-05-20 | 2011-05-20 |  | 0d |
| 83 | 1.1.7.5.3 | Editor to define Static Pages |  | 1d | 2011-05-20 | 2011-05-20 |  | 0d |
| 84 | 1.1.7.5.4 | Rich Text Editor component with image upload and filters |  | 1d | 2011-05-20 | 2011-05-20 |  | 0d |
| 85 | 1.1.7.5.5 | Style/Skin Editor |  | 1d | 2011-05-20 | 2011-05-20 |  | 0d |
| 86 | 1.1.8 | Alerts/Notifications | manual | 2d | 2011-05-20 | 2011-05-23 |  |  |
| 87 | 1.1.9 | Mails |  | 1d? | 2011-05-20 A | 2011-05-20 A | 100% |  |
| 88 | 1.1.10 | **UI Framework Components and Functionality** |  | 1d | 2011-05-20 | 2011-05-20 |  |  |
| 89 | 1.1.10.1 | Recent Activities |  | 1d | 2011-05-20 | 2011-05-20 |  | 0d |
| 90 | 1.1.10.2 | Favorites |  | 1d | 2011-05-20 | 2011-05-20 |  | 0d |
| 91 | 1.1.10.3 | Lister Header - sorting, column selector |  | 1d | 2011-05-20 | 2011-05-20 |  | 0d |
| 92 | 1.1.10.4 | Search Filters |  | 1d | 2011-05-20 | 2011-05-20 |  | 0d |
| 93 | 1.1.10.5 | Text Search |  | 1d | 2011-05-20 | 2011-05-20 |  | 0d |
| 94 | 1.1.11 | **Dashboard/Report** |  | 2d | 2011-05-20 | 2011-05-23 |  |  |
| 95 | 1.1.11.1 | **Gadgets** |  | 1d | 2011-05-20 | 2011-05-20 |  |  |
| 96 | 1.1.11.1.1 | Lister |  | 1d | 2011-05-20 | 2011-05-20 |  | 0d |
| 97 | 1.1.11.1.2 | Pie Chart |  | 1d | 2011-05-20 | 2011-05-20 |  | 0d |
| 98 | 1.1.11.1.3 | Bar Chart |  | 1d | 2011-05-20 | 2011-05-20 |  | 0d |
| 99 | 1.1.11.1.4 | Line Chart |  | 1d | 2011-05-20 | 2011-05-20 |  | 0d |
| 100 | 1.1.11.1.5 | Notifications Gadget |  | 1d | 2011-05-20 | 2011-05-20 |  | 0d |
| 101 | 1.1.11.1.6 | Alerts Gadget |  | 1d | 2011-05-20 | 2011-05-20 |  | 0d |
| 102 | 1.1.11.2 | Dashboard Management |  | 1d | 2011-05-20 | 2011-05-20 |  | 1d |
| 103 | 1.1.11.3 | Report Management |  | 1d | 2011-05-20 | 2011-05-20 |  | 1d |
| 104 | 1.1.11.4 | Export to pdf, word etc | manual | 15d | 2011-05-20 | 2011-06-09 |  |  |

| ID | WBS | Task | Type | Duration | Start | Finish | Total slack | Free slack | Resources | Work |
| --- | --- | --- | --- | --- | --- | --- | --- | --- | --- | --- |
| 105 | 1.2 | **Tenant Portal** |  | 1d? | 2011-05-20 | 2011-05-20 |  |  |  | 88h |
| 106 | 1.2.1 | **General Site Design** |  | 1d | 2011-05-20 | 2011-05-20 |  |  |  | 88h |
| 107 | 1.2.1.1 | Site Map |  | 2d | 2011-05-30 | 2011-05-31 | -7d | 0d | VadimS | 16h |
| 108 | 1.2.1.2 | Styles |  | 3d | 2011-05-20 | 2011-05-24 | -2d | 0d | VadimS | 24h |
| 109 | 1.2.1.3 | Maps |  | 1d | 2011-06-03 | 2011-06-03 | -10d | 0d | VadimS | 8h |
| 110 | 1.2.1.4 | Picture Views |  | 3d | 2011-05-25 | 2011-05-27 | -5d | 0d | VadimS | 24h |
| 111 | 1.2.1.5 | Site Layout |  | 2d | 2011-06-01 | 2011-06-02 | -9d | 0d | VadimS | 16h |
| 112 | 1.2.2 | **Functionality** |  | 1d? | 2011-05-20 | 2011-05-20 |  |  |  |  |
| 113 | 1.2.2.1 | Building(Complex) Lister |  | 1d | 2011-05-20 | 2011-05-20 | 0d |  |  |  |
| 114 | 1.2.2.2 | Building(Complex) Details |  | 1d | 2011-05-20 | 2011-05-20 | 0d |  |  |  |
| 115 | 1.2.2.3 | Unit Type (Floorplan) Details |  | 1d | 2011-05-20 | 2011-05-20 | 0d |  |  |  |
| 116 | 1.2.2.4 | Apply for Lease |  | 1d | 2011-05-20 | 2011-05-20 | 0d |  |  |  |
| 117 | 1.2.2.5 | Inqiuary |  | 1d | 2011-05-20 | 2011-05-20 | 0d |  |  |  |
| 118 | 1.2.2.6 | AVAILABILITY NOTIFICATION (Rerplaces Waiting List) |  | 1d | 2011-05-20 | 2011-05-20 | 0d |  |  |  |
| 119 | 1.2.2.7 | **Current application status, progress, approval process** |  | 1d? | 2011-05-20 | 2011-05-20 |  |  |  |  |
| 120 | 1.2.2.7.1 | Status page |  | 1d | 2011-05-20 | 2011-05-20 | 0d |  |  |  |
| 121 | 1.2.2.7.2 | Show and sign the lease |  | 2d? | 2011-05-20 | 2011-05-23 | -1d | 0d |  |  |
| 122 | 1.2.2.7.3 | Confirm PAP(Preauthorised Payment Plan) method |  | 2d? | 2011-05-20 | 2011-05-23 | -1d | 0d |  |  |
| 123 | 1.2.2.7.4 | Schedule move-in date |  | 2d? | 2011-05-20 | 2011-05-23 | -1d | 0d |  |  |
| 124 | 1.2.2.7.5 | Confirming Tenant Insurance and Hydro |  | 2d? | 2011-05-20 | 2011-05-23 | -1d | 0d |  |  |
| 125 | 1.2.2.7.6 | UPSELL page for PV to make profit through alliances |  | 2d? | 2011-05-20 | 2011-05-23 | -1d | 0d |  |  |
| 126 | 1.2.2.8 | Maintanance call | inactive | 2d | 2011-05-20 | 2011-05-23 | -1d | 0d |  |  |
| 127 | 1.2.2.9 | **Payments** |  | 1d? | 2011-05-20 | 2011-05-20 |  |  |  |  |
| 128 | 1.2.2.9.1 | Payment method editor |  | 2d | 2011-05-20 | 2011-05-23 | -1d | 0d |  |  |
| 129 | 1.2.2.9.2 | Payment history |  | 2d | 2011-05-20 | 2011-05-23 | -1d | 0d |  |  |
| 130 | 1.2.2.9.3 | Current/Outstanding charges |  | 2d | 2011-05-20 | 2011-05-23 | -1d | 0d |  |  |
| 131 | 1.2.2.10 | My Account | manual | 5d | 2011-05-20 | 2011-05-26 |  |  |  |  |
| 132 | 1.2.2.11 | Notice etc... | inactive, manual | 1d? | 2011-05-20 | 2011-05-20 |  |  |  |  |
| 133 | 1.2.2.12 | Static Content Presentation |  | 3d | 2011-05-20 | 2011-05-24 | -2d | 0d |  |  |

Notes:
- 114: Functionality: / - Inquiary(Contact Us)
- 115: Functionality: / - Inquiary(Contact Us) / - Apply Now/Waiting List
- 118: Waiting list should notify sequentially, requires reservation of Apt, etc...
- 119: http://propertyvista.jira.com/wiki/display/VISTA/PT+Approval+Process
- 125: Cable / Internet / Phone / Cell Phone / Tenant Insurance / Car Insurance

| ID | WBS | Task | Type | Duration | Start | Finish | Total slack | Free slack | Resources | Work |
| --- | --- | --- | --- | --- | --- | --- | --- | --- | --- | --- |
| 134 | 1.3 | **API Layer** | inactive | 5d | 2011-05-20 | 2011-05-26 | 0d |  |  |  |
| 135 | 1.3.1 | REST Layer | inactive, manual | 5d | 2011-05-20 | 2011-05-26 |  |  |  |  |
| 136 | 1.4 | www.birchwoodsoftwaregroup.com | inactive, manual | 1d? | 2011-05-20 | 2011-05-20 |  |  |  |  |
| 137 | 1.5 | **PT Application Wizard** |  | 43d | 2011-05-20 | 2011-07-19 | 0d |  |  | 184h |
| 138 | 1.5.1 | Mail Notifications and Invitations |  | 6d | 2011-07-12 | 2011-07-19 | 6d |  | VladS | 48h |
| 139 | 1.5.2 | Co-Signer Flow |  | 7d | 2011-07-01 | 2011-07-11 | 12d |  | VladS | 56h |
| 140 | 1.5.3 | Support IE7 |  | 7d | 2011-05-20 | 2011-05-30 | 42d |  | MichaelL | 56h |
| 141 | 1.5.4 | Facility to describe uploaded document | manual | 3d | 2011-05-20 | 2011-05-24 |  |  | VladL | 24h |
| 142 | 1.6 | **Server** |  | 1d? | 2011-05-20 | 2011-05-20 |  |  |  | 128h |
| 143 | 1.6.1 | CRUD Functionality Services |  | 7d | 2011-05-20 | 2011-05-30 | -6d | 0d | VladS | 56h |
| 144 | 1.6.2 | DNS selector for PM |  | 2d | 2011-06-29 | 2011-06-30 | -29d | 0d | VladS | 16h |
| 145 | 1.6.3 | Eqifax |  | 7d | 2011-05-31 | 2011-06-08 | -13d | 0d | VladS | 56h |
| 146 | 1.6.4 | Vista Corporate Site for PM Sign-up, Account configuration, Corporate-wise Policy Definition | inactive, manual | 1d? | 2011-05-20 | 2011-05-20 |  |  |  |  |

Notes:
- 134: In case PM has itsown site, to access to Tenant Portal functionality and duplicate it on its own site
- 136: Info site, PM registration etc...
- 141: Ability to define predefined document type that is aligned with a policy and provide a note for it in a case of other
